# 甘特图

Schedule from MS Project, 2017-09-28 to 2018-01-14, 2 hours a day, costs in ¥.

## Calendars

- “24 小时”的副本: Mon-Sun 19:00-21:00.

## Resources

| Resource | Rate |
| --- | --- |
| 李文杰 | 28.83 |
| 赵伟 | 28.83 |
| 陈启强 | 28.83 |
| 余泽伟 | 28.83 |
| 周伟 | 28.83 |

## Schedule

| ID | WBS | Task | Type | Duration | Start | Finish | Predecessors | Constraint | Resources | Work | Cost |
| --- | --- | --- | --- | --- | --- | --- | --- | --- | --- | --- | --- |
| 1 | 11 | **项目启动** |  | 24d | 2017-09-28 | 2017-10-21 |  |  |  | 72.75h | 2,097.38 |
| 2 | 11.1 | 团队建立 | manual | 1d | 2017-09-28 | 2017-09-28 |  |  | 李文杰 [50%]; 余泽伟 [50%]; 赵伟 [50%]; 陈启强 [50%]; 周伟 [50%] | 4.05h | 116.76 |
| 3 | 1.2 | 搜集文档模板 | manual | 1d | 2017-09-28 | 2017-09-28 | 2 |  | 周伟 [50%]; 李文杰 [50%]; 赵伟 [50%]; 余泽伟 [50%]; 陈启强 [50%] | 5h | 144.15 |
| 4 | 11.2 | 软件安装 | manual | 9d | 2017-09-29 | 2017-10-07 | 3 |  | 李文杰 [20%]; 余泽伟 [20%]; 赵伟 [20%]; 陈启强 [20%]; 周伟 [20%] | 18h | 518.94 |
| 5 | 11.4 | 撰写《可行性研究报告》及PPT | manual | 6d | 2017-10-09 | 2017-10-14 | 3 | start no earlier than 2017-10-09 | 赵伟 | 12h | 345.96 |
| 6 | 11.6 | 提交《可行性研究报告》及PPT | manual | 1d | 2017-10-15 | 2017-10-15 | 5 |  | 陈启强 [5%] | 0.1h | 2.88 |
| 7 | 11.5 | 修改《可行性研究报告》及PPT | manual | 6d | 2017-10-16 | 2017-10-21 | 6 | start no earlier than 2017-10-16 | 余泽伟 [80%]; 赵伟; 周伟 | 33.6h | 968.69 |
| 8 | 12 | **项目规划** |  | 27d | 2017-10-17 | 2017-11-12 | 1 |  |  | 75.3h | 2,170.9 |
| 9 | 12.4 | 撰写项目章程 | manual | 3d | 2017-10-20 | 2017-10-22 |  | start no earlier than 2017-10-20 | 赵伟 [200%] | 12h | 345.96 |
| 10 | 12.5 | 撰写项目总体计划 | manual | 3d | 2017-10-20 | 2017-10-22 |  | start no earlier than 2017-10-20 | 周伟 [200%] | 12h | 345.96 |
| 11 | 2.3 | UM概述1演示文档制作 | manual | 8d | 2017-10-22 | 2017-10-29 |  |  | 赵伟 | 16h | 461.28 |
| 12 | 12.11 | 提交《项目章程》 | manual | 1d | 2017-10-22 | 2017-10-22 | 9 |  | 陈启强 [5%] | 0.1h | 2.88 |
| 13 | 12.12 | 提交《项目总体计划》 | manual | 1d | 2017-10-22 | 2017-10-22 | 10 |  | 陈启强 [5%] | 0.1h | 2.88 |
| 14 | 2.6 | 修改《项目总体计划》 | manual | 4d | 2017-10-25 | 2017-10-28 | 10 |  | 周伟 [80%] | 6.4h | 184.51 |
| 15 | 2.7 | UML2.0演示文档制作 | manual | 3d | 2017-10-27 | 2017-10-29 |  |  | 余泽伟 | 6h | 172.98 |
| 16 | 12.21 | 撰写《QA计划》 | manual | 3d | 2017-10-27 | 2017-10-29 | 17 |  | 周伟 | 6h | 172.98 |
| 17 | 2.9 | 修改《项目章程》 | manual | 3d | 2017-10-27 | 2017-10-29 |  |  | 赵伟 [80%] | 4.8h | 138.38 |
| 18 | 12.26 | 提交《QA计划》和项目各类修改文档 | manual | 1d | 2017-10-29 | 2017-10-29 | 16 |  | 陈启强 [10%] | 0.2h | 5.77 |
| 19 | 12.29 | 修改《项目章程》 | manual | 1d | 2017-11-01 | 2017-11-01 | 17 |  | 赵伟 [80%] | 1.6h | 46.13 |
| 20 | 12.31 | 修改《需求工程项目计划》 | manual | 5d | 2017-11-01 | 2017-11-05 |  |  | 余泽伟 | 10h | 288.3 |
| 21 | 12.35 | 提交《需求工程项目计划》 | manual | 1d | 2017-11-05 | 2017-11-05 |  |  | 陈启强 [5%] | 0.1h | 2.88 |
| 22 | 13 | **项目执行** |  | 57d | 2017-11-07 | 2018-01-02 | 8 |  |  | 252.7h | 7,285.34 |
| 23 | 3.1 | 修改《需求工程项目计划》 | manual | 6d | 2017-11-07 | 2017-11-12 | 21 |  | 李文杰 [80%] | 9.6h | 276.77 |
| 24 | 3.2 | 撰写开发过程WBS图 | manual | 2d | 2017-11-09 | 2017-11-10 |  | start no earlier than 2017-11-09 | 李文杰 | 4h | 115.32 |
| 25 | 13.1 | 《需求工程项目计划》评审 | manual | 1d | 2017-11-13 | 2017-11-13 | 23 | start no earlier than 2017-11-13 | 李文杰; 余泽伟; 赵伟; 陈启强; 周伟 | 10h | 288.3 |
| 26 | 3.4 | 修改《需求工程项目计划》 | manual | 1d | 2017-11-13 | 2017-11-13 | 25 |  | 李文杰 [80%] | 1.6h | 46.13 |

| ID | WBS | Task | Type | Duration | Start | Finish | Predecessors | Resources | Work | Cost |
| --- | --- | --- | --- | --- | --- | --- | --- | --- | --- | --- |
| 27 | 13.2 | **需求分析** |  | 44d | 2017-11-10 | 2017-12-23 |  |  | 227.5h | 6,558.82 |
| 28 | 3.5.1 | **撰写《用户代表确认文档》** |  | 2d | 2017-11-14 | 2017-11-15 |  |  | 12h | 345.96 |
| 29 | 3.5.1.1 | 撰写《教师代表确认文档》 | manual | 1d | 2017-11-15 | 2017-11-15 |  | 李文杰 [200%] | 4h | 115.32 |
| 30 | 3.5.1.2 | 撰写《学生代表确认文档》 | manual | 1d | 2017-11-15 | 2017-11-15 |  | 赵伟 [200%] | 4h | 115.32 |
| 31 | 3.5.1.3 | 撰写《管理员代表确认文档》 | manual | 1d | 2017-11-15 | 2017-11-15 |  | 余泽伟 [200%] | 4h | 115.32 |
| 32 | 13.2.32 | 界面原型设计-初步 | manual | 3d | 2017-11-17 | 2017-11-19 | 28 | 周伟 [200%] | 12h | 345.96 |
| 33 | 3.5.3 | **撰写用例文档** |  | 5.5d | 2017-11-17 | 2017-11-22 | 32 |  | 58.8h | 1,695.2 |
| 34 | 13.2.33 | 撰写《教师用例文档》 | manual | 3d | 2017-11-17 | 2017-11-19 |  | 李文杰 [300%] | 18h | 518.94 |
| 35 | 3.5.3.2 | 撰写《学生用例文档》 | manual | 3d | 2017-11-17 | 2017-11-19 |  | 赵伟 [300%] | 18h | 518.94 |
| 36 | 3.5.3.3 | 撰写《管理员用例文档》 | manual | 3d | 2017-11-17 | 2017-11-19 |  | 余泽伟 [300%] | 18h | 518.94 |
| 37 | 3.5.3.4 | 撰写《游客用例文档》 | manual | 3d | 2017-11-19 | 2017-11-21 |  | 陈启强 [80%] | 4.8h | 138.38 |
| 38 | 13.2.34 | 《前景与范围文档》修改 | manual | 1d | 2017-11-20 | 2017-11-20 |  | 周伟 [80%] | 1.6h | 46.13 |
| 39 | 13.2.38 | 提交《用例与用例文档》、界面原型、《前景与范围》、《用户群分类》 | manual | 1d | 2017-11-20 | 2017-11-20 | 28, 32 | 陈启强 [5%] | 0.1h | 2.88 |
| 40 | 3.5.6 | 修改《学生用例文档》 | manual | 3d | 2017-11-22 | 2017-11-24 | 39 | 赵伟 [80%] | 4.8h | 138.38 |
| 41 | 3.5.7 | 第一次访谈客户代表 | manual | 0.5d | 2017-11-26 | 2017-11-26 | 39 | 周伟; 李文杰; 赵伟; 余泽伟; 陈启强 | 5h | 144.15 |
| 42 | 3.5.8 | 第一次访谈教师代表 | manual | 1d | 2017-11-26 | 2017-11-26 | 39 | 周伟; 李文杰; 赵伟; 余泽伟; 陈启强 | 10h | 288.3 |
| 43 | 13.2.32 | 修改界面原型 | manual | 2d | 2017-11-26 | 2017-11-27 |  | 周伟 [200%] | 8h | 230.64 |
| 44 | 3.5.10 | 修改《教师用例文档》 | manual | 2d | 2017-11-26 | 2017-11-27 |  | 李文杰 [80%] | 3.2h | 92.26 |
| 45 | 3.5.11 | 修改《学生用例文档》 | manual | 3d | 2017-12-01 | 2017-12-03 | 42 | 赵伟 [80%] | 4.8h | 138.38 |
| 46 | 3.5.12 | 撰写《数据字典》 | manual | 1d | 2017-12-03 | 2017-12-03 | 42 | 李文杰 [150%]; 赵伟 [150%]; 余泽伟 [150%]; 陈启强 [150%] | 12h | 345.96 |
| 47 | 3.5.13 | 提交《用例与用例文档》、界面原型、ER图、《需求规格说明书》 | manual | 1d | 2017-12-04 | 2017-12-04 | 42 | 陈启强 [5%] | 0.1h | 2.88 |
| 48 | 3.5.14 | 第二次访谈教师代表 | manual | 1d | 2017-12-05 | 2017-12-05 | 42 | 周伟; 李文杰; 赵伟; 余泽伟; 陈启强 | 10h | 288.3 |
| 49 | 3.5.15 | 修改界面原型 | manual | 2d | 2017-12-06 | 2017-12-07 | 48 | 周伟 [200%] | 8h | 230.64 |
| 50 | 3.5.16 | 修改《教师用例文档》 | manual | 1d | 2017-12-05 | 2017-12-05 |  | 李文杰 [80%] | 1.6h | 46.13 |
| 51 | 3.5.17 | 修改数据字典 | manual | 3d | 2017-12-05 | 2017-12-07 |  | 李文杰 [80%]; 赵伟 [80%]; 余泽伟 [80%] | 14.4h | 415.15 |
| 52 | 3.5.18 | 撰写《软件用户手册》 | manual | 1d | 2017-12-07 | 2017-12-07 | 39 | 周伟 [150%] | 3h | 86.49 |
| 53 | 3.5.19 | 草拟需求规格说明书 | manual | 3d | 2017-12-09 | 2017-12-11 | 39 | 陈启强 [400%] | 24h | 691.92 |
| 54 | 3.5.20 | 修改《教师用例文档》 | manual | 2d | 2017-12-09 | 2017-12-10 | 44 | 李文杰 [80%] | 3.2h | 92.26 |
| 55 | 3.5.21 | 修改《学生用例文档》 | manual | 1d | 2017-12-10 | 2017-12-10 | 45 | 赵伟 [80%] | 1.6h | 46.13 |
| 56 | 3.5.22 | 修改《软件需求规格说明书》 | manual | 2d | 2017-12-15 | 2017-12-16 |  | 陈启强 [80%] | 3.2h | 92.26 |
| 57 | 3.5.23 | 修改《管理员用例文档》 | manual | 1d | 2017-12-16 | 2017-12-16 |  | 余泽伟 [80%] | 1.6h | 46.13 |
| 58 | 3.5.24 | 修改《教师用例文档》 | manual | 1d | 2017-12-16 | 2017-12-16 | 54 | 李文杰 [80%] | 1.6h | 46.13 |
| 59 | 3.5.25 | 修改《教师测试用例》 | manual | 1d | 2017-12-16 | 2017-12-16 |  | 李文杰 [80%] | 1.6h | 46.13 |
| 60 | 3.5.26 | 修改数据字典 | manual | 2d | 2017-12-15 | 2017-12-16 | 51 | 李文杰 [80%]; 陈启强 [80%] | 6.4h | 184.51 |
| 61 | 3.5.27 | 修改《软件用户手册》 | manual | 1d | 2017-12-18 | 2017-12-18 |  | 周伟 [80%] | 1.6h | 46.13 |
| 62 | 3.5.28 | 提交修改《软件需求规格说明书》、对话框图、数据流图 | manual | 1d | 2017-12-18 | 2017-12-18 |  | 陈启强 [5%] | 0.1h | 2.88 |
| 63 | 3.5.29 | 修改《软件需求规格说明书》 | manual | 2d | 2017-12-20 | 2017-12-21 | 56 | 陈启强 [80%] | 3.2h | 92.26 |
| 64 | 3.5.30 | JAD会议 | manual | 1d | 2017-12-21 | 2017-12-21 | 53 | 周伟; 李文杰; 赵伟; 余泽伟; 陈启强 | 10h | 288.3 |

| ID | WBS | Task | Type | Duration | Start | Finish | Predecessors | Resources | Work | Cost |
| --- | --- | --- | --- | --- | --- | --- | --- | --- | --- | --- |
| 65 | 178 | **项目控制** |  | 20d | 2017-12-19 | 2018-01-07 |  |  | 21h | 605.43 |
| 66 | 178.1 | **需求变更** |  | 10d | 2017-12-19 | 2017-12-28 |  |  | 21h | 605.43 |
| 67 | 178.1.52 | 撰写《需求变更文档》 | manual | 3d | 2017-12-20 | 2017-12-22 |  | 余泽伟 [150%] | 9h | 259.47 |
| 68 | 4.1.2 | 撰写《需求变更申请报告》 | manual | 3d | 2017-12-23 | 2017-12-25 |  | 李文杰 | 6h | 172.98 |
| 69 | 4.1.3 | 撰写《CCB章程》 | manual | 3d | 2017-12-26 | 2017-12-28 | 67 | 周伟 | 6h | 172.98 |
| 70 | 179 | **项目收尾** |  | 17d | 2017-12-29 | 2018-01-14 | 65 |  | 73.6h | 2,121.89 |
| 71 | 5.1 | 撰写《项目绩效评价》 | manual | 2d | 2017-12-29 | 2017-12-30 |  | 余泽伟 [150%] | 6h | 172.98 |
| 72 | 179.9 | 安装部署计划 | manual | 4d | 2017-12-31 | 2018-01-03 |  | 余泽伟 [150%] | 12h | 345.96 |
| 73 | 179.8 | Requisitepro数据导入导出 | manual | 3d | 2018-01-02 | 2018-01-04 |  | 余泽伟 [200%] | 12h | 345.96 |
| 74 | 179.4 | 测试计划 | manual | 3d | 2018-01-03 | 2018-01-05 |  | 李文杰 [200%] | 12h | 345.96 |
| 75 | 179.5 | 培训计划 | manual | 2d | 2018-01-06 | 2018-01-07 |  | 周伟 [150%] | 6h | 172.98 |
| 76 | 179.6 | 系统维护计划 | manual | 2d | 2018-01-08 | 2018-01-09 |  | 周伟 [200%] | 8h | 230.64 |
| 77 | 179.11 | 《系统设计与实现计划》 | manual | 1d | 2018-01-10 | 2018-01-10 |  | 李文杰 [200%] | 4h | 115.32 |
| 78 | 179.14 | 修改整理各类旧文档及PPT | manual | 1d | 2018-01-11 | 2018-01-11 |  | 赵伟; 陈启强; 李文杰; 余泽伟; 周伟 | 10h | 288.3 |
| 79 | 179.18 | 撰写《项目总结报告》及PPT | manual | 1d | 2018-01-12 | 2018-01-12 |  | 陈启强 | 2h | 57.66 |
| 80 | 5.10 | 修改《项目总结报告》 | manual | 1d | 2018-01-13 | 2018-01-13 | 79 | 陈启强 [80%] | 1.6h | 46.13 |
| 81 | 179.20 | 评审 | milestone, manual | 0d | 2018-01-14 | 2018-01-14 | 80 | 李文杰; 余泽伟; 赵伟; 陈启强; 周伟 |  |  |
